# PPCLINICA

Schedule from MS Project, 2021-07-15 to 2021-09-03, costs in R$.

## Calendars

- Padrão: Mon-Fri 09:00-12:00, 13:00-18:00; Sat-Sun off.

## Resources

| Resource | Rate |
| --- | --- |
| Analista 01 | 30 |
| Analista 02 | 10 |
| GP Externo |  |
| Analista 03 | 30 |
| Analista 04 | 10 |
| Analista 05 | 30 |

## Schedule

| ID | WBS | Task | Type | Duration | Start | Finish | Predecessors | Baseline start | Baseline finish | Baseline duration | Total slack | Free slack | Resources | Work | Cost | Baseline cost |
| --- | --- | --- | --- | --- | --- | --- | --- | --- | --- | --- | --- | --- | --- | --- | --- | --- |
| 1 | 1 | **Projeto Igreja** |  | 36.25d? | 2021-07-15 09:00 | 2021-09-03 11:00 |  | 2021-07-15 09:00 | 2021-09-03 11:00 | 36.25d? |  |  |  | 187h | 4,652 | 4,794 |
| 2 | 1.1 | **Prospecção** |  | 0.23d | 2021-07-15 09:00 | 2021-07-15 10:48 |  | 2021-07-15 09:00 | 2021-07-15 10:48 | 0.23d | 24.4d |  |  | 9h | 198 | 198 |
| 3 | 1.1.1 | **Estudo do tema** |  | 0.23d | 2021-07-15 09:00 | 2021-07-15 10:48 |  | 2021-07-15 09:00 | 2021-07-15 10:48 | 0.23d | 24.4d | 0d |  | 9h | 198 | 198 |
| 4 | 1.1.1.1 | Estudar Domínio de Aplicação |  | 0.2d | 2021-07-15 09:00 | 2021-07-15 10:36 |  | 2021-07-15 09:00 | 2021-07-15 10:36 | 0.2d | 17.15d | 0d | Analista 01; Analista 02; Analista 03; Analista 04; Analista 05 | 8h | 176 | 176 |
| 5 | 1.1.1.2 | Divisão de tarefas |  | 0.03d | 2021-07-15 10:36 | 2021-07-15 10:48 | 4 | 2021-07-15 10:36 | 2021-07-15 10:48 | 0.03d | 17.15d |  | Analista 01; Analista 02; Analista 03; Analista 04; Analista 05 | 1h | 22 | 22 |
| 6 | 1.2 | **Análise** |  | 2.29d | 2021-07-15 09:00 | 2021-07-19 11:18 |  | 2021-07-15 09:00 | 2021-07-19 11:18 | 2.29d | 24.94d |  |  | 27h | 620 | 620 |
| 7 | 1.2.1 | **Documento de Requisitos** |  | 1.16d | 2021-07-15 09:00 | 2021-07-16 10:18 |  | 2021-07-15 09:00 | 2021-07-16 10:18 | 1.16d | 24.62d | 0d |  | 11h | 220 | 220 |
| 8 | 1.2.1.1 | Elaborar DRE |  | 0.72d | 2021-07-15 10:48 | 2021-07-16 09:18 | 3 | 2021-07-15 10:48 | 2021-07-16 09:18 | 0.72d | 17.15d | 0d | Analista 01; Analista 02 | 9h | 180 | 180 |
| 9 | 1.2.1.2 | Revisar DRE |  | 0.12d | 2021-07-16 09:18 | 2021-07-16 10:18 | 8 | 2021-07-16 09:18 | 2021-07-16 10:18 | 0.12d | 17.25d |  | Analista 01; Analista 02 | 2h | 40 | 40 |
| 10 | 1.2.1.3 | Submeter DRE para Aprovação do Cliente | milestone | 0d | 2021-07-15 09:00 | 2021-07-15 09:00 |  | 2021-07-15 09:00 | 2021-07-15 09:00 | 0d | 18.41d |  | Analista 01; Analista 02; Analista 03; Analista 04; Analista 05 |  |  |  |
| 11 | 1.2.2 | **Est. Prel. Tamanho** |  | 0.62d | 2021-07-16 10:18 | 2021-07-16 16:18 |  | 2021-07-16 10:18 | 2021-07-16 16:18 | 0.62d | 33.96d | 0d |  | 5h | 150 | 150 |
| 12 | 1.2.2.1 | Estimar Tamanho do Projeto |  | 0.38d | 2021-07-16 10:18 | 2021-07-16 14:18 | 7 | 2021-07-16 10:18 | 2021-07-16 14:18 | 0.38d | 33.96d | 0d | Analista 03 | 3h | 90 | 90 |
| 13 | 1.2.2.2 | Revisar Estimativa de Tamanho do Projeto |  | 0.25d | 2021-07-16 14:18 | 2021-07-16 16:18 | 12 | 2021-07-16 14:18 | 2021-07-16 16:18 | 0.25d | 33.96d |  | Analista 03 | 2h | 60 | 60 |
| 14 | 1.2.3 | **Est. Prel Cronograma** |  | 0.5d | 2021-07-16 16:18 | 2021-07-19 11:18 |  | 2021-07-16 16:18 | 2021-07-19 11:18 | 0.5d | 33.96d |  |  | 4h | 40 | 40 |
| 15 | 1.2.3.1 | Elaborar Cronograma Preliminar |  | 0.25d | 2021-07-16 16:18 | 2021-07-19 09:18 | 11 | 2021-07-16 16:18 | 2021-07-19 09:18 | 0.25d | 33.96d | 0d | Analista 04 | 2h | 20 | 20 |
| 16 | 1.2.3.2 | Revisar Cronograma Preliminar |  | 0.25d | 2021-07-19 09:18 | 2021-07-19 11:18 | 15 | 2021-07-19 09:18 | 2021-07-19 11:18 | 0.25d | 33.96d |  | Analista 04 | 2h | 20 | 20 |
| 17 | 1.2.4 | **MRB** |  | 0.88d | 2021-07-16 10:18 | 2021-07-19 09:18 |  | 2021-07-16 10:18 | 2021-07-19 09:18 | 0.88d | 24.62d |  |  | 7h | 210 | 210 |
| 18 | 1.2.4.1 | Elaborar MRB |  | 0.62d | 2021-07-16 10:18 | 2021-07-16 16:18 | 7 | 2021-07-16 10:18 | 2021-07-16 16:18 | 0.62d | 17.25d | 0d | Analista 05 | 5h | 150 | 150 |
| 19 | 1.2.4.2 | Revisar MRB |  | 0.25d | 2021-07-16 16:18 | 2021-07-19 09:18 | 18 | 2021-07-16 16:18 | 2021-07-19 09:18 | 0.25d | 17.25d | 0.96d | Analista 05 | 2h | 60 | 60 |
| 20 | 1.3 | **Projeto** |  | 0.75d | 2021-07-19 09:18 | 2021-07-19 16:18 |  | 2021-07-20 09:00 | 2021-07-22 16:18 | 2.79d | 24.62d | 0d |  | 6h | 180 | 180 |
| 21 | 1.3.1 | **Diagrama de Classes** |  | 0.75d | 2021-07-19 09:18 | 2021-07-19 16:18 |  | 2021-07-20 09:00 | 2021-07-20 16:00 | 0.75d | 24.62d |  |  | 6h | 180 | 180 |
| 22 | 1.3.1.1 | Elaborar Diagrama de Classe |  | 0.25d | 2021-07-19 09:18 | 2021-07-19 11:18 | 19 | 2021-07-20 09:00 | 2021-07-20 11:00 | 0.25d | 24.62d | 0d | Analista 05 | 2h | 60 | 60 |
| 23 | 1.3.1.2 | Revisar Diagrama de Classe |  | 0.25d | 2021-07-19 11:18 | 2021-07-19 14:18 | 22 | 2021-07-20 11:00 | 2021-07-20 14:00 | 0.25d | 24.62d | 0d | Analista 05 | 2h | 60 | 60 |
| 24 | 1.3.1.3 | Atualizar MRB |  | 0.25d | 2021-07-19 14:18 | 2021-07-19 16:18 | 23 | 2021-07-20 14:00 | 2021-07-20 16:00 | 0.25d | 24.62d |  | Analista 05 | 2h | 60 | 60 |

| ID | WBS | Task | Duration | Start | Finish | Predecessors | Baseline start | Baseline finish | Baseline duration | Total slack | Free slack | Resources | Work | Cost | Baseline cost |
| --- | --- | --- | --- | --- | --- | --- | --- | --- | --- | --- | --- | --- | --- | --- | --- |
| 25 | 1.4 | **Planejamento** | 0.39d? | 2021-07-19 16:18 | 2021-07-20 10:24 |  | 2021-07-22 16:18 | 2021-07-23 11:36 | 0.54d? | 24.41d | 0d |  | 7h | 154 | 286 |
| 26 | 1.4.1 | Pesquisar Soluções Existentes | 0.1d? | 2021-07-19 16:18 | 2021-07-20 09:24 | 20 | 2021-07-22 16:18 | 2021-07-23 10:36 | 0.4d? | 24.41d | 0d | Analista 01; Analista 02; Analista 03; Analista 04; Analista 05 | 2h | 44 | 176 |
| 27 | 1.4.2 | Definir Linguagens e Frameworks | 0.07d? | 2021-07-20 09:24 | 2021-07-20 10:00 | 26 | 2021-07-23 10:36 | 2021-07-23 11:12 | 0.07d? | 24.41d | 0d | Analista 01; Analista 02; Analista 03; Analista 04; Analista 05 | 3h | 66 | 66 |
| 28 | 1.4.3 | Revisar Divisão de tarefas | 0.05d? | 2021-07-20 10:00 | 2021-07-20 10:24 | 27 | 2021-07-23 11:12 | 2021-07-23 11:36 | 0.05d? | 24.41d |  | Analista 01; Analista 02; Analista 03; Analista 04; Analista 05 | 2h | 44 | 44 |
| 29 | 1.5 | **Desenvolvimento** | 6.42d? | 2021-07-20 10:24 | 2021-07-28 14:44 |  | 2021-07-23 11:36 | 2021-08-03 11:37 | 7d? | 24.41d | 0d |  | 114h | 3,020 | 3,030 |
| 30 | 1.5.1 | **Release 01** | 0.4d? | 2021-07-20 10:24 | 2021-07-20 14:34 |  | 2021-07-23 11:36 | 2021-07-29 14:07 | 4.19d? | 24.41d |  |  | 10h | 260 | 1,890 |
| 31 | 1.5.1.1 | **Implementação** | 0.33d? | 2021-07-20 10:24 | 2021-07-20 14:04 |  | 2021-07-23 11:36 | 2021-07-29 11:36 | 4d? | 24.41d |  |  | 8h | 240 | 1,800 |
| 32 | 1.5.1.1.1 | **Requisitos Funcionais de Cliente 01** | 0.17d? | 2021-07-20 10:24 | 2021-07-20 11:44 |  | 2021-07-23 11:36 | 2021-07-26 14:16 | 1.21d? | 24.41d | 0d |  | 4h | 120 | 600 |
| 33 | 1.5.1.1.1.1 | Implementar RFS01 | 0.04d | 2021-07-20 10:24 | 2021-07-20 10:44 | 25 | 2021-07-23 11:36 | 2021-07-23 14:16 | 0.33d | 24.41d | 0d | Analista 01; Analista 03; Analista 05 | 1h | 30 | 150 |
| 34 | 1.5.1.1.1.2 | Implementar RFS02 | 0.04d? | 2021-07-20 10:44 | 2021-07-20 11:04 | 33 | 2021-07-23 14:16 | 2021-07-26 09:56 | 0.33d? | 24.78d | 0d | Analista 03; Analista 01; Analista 05 | 1h | 30 | 150 |
| 35 | 1.5.1.1.1.3 | Implementar RFS03 | 0.04d? | 2021-07-20 11:04 | 2021-07-20 11:24 | 34 | 2021-07-26 09:56 | 2021-07-26 11:36 | 0.21d? | 24.78d | 0d | Analista 01; Analista 03; Analista 05 | 1h | 30 | 150 |
| 36 | 1.5.1.1.1.4 | Implementar RFS04 | 0.04d? | 2021-07-20 11:24 | 2021-07-20 11:44 | 35 | 2021-07-26 11:36 | 2021-07-26 14:16 | 0.33d? | 24.78d |  | Analista 01; Analista 03; Analista 05 | 1h | 30 | 150 |
| 37 | 1.5.1.1.2 | **Requisitos Funcionais de Cliente 04** | 0.17d | 2021-07-20 11:44 | 2021-07-20 14:04 |  | 2021-07-28 09:56 | 2021-07-29 11:36 | 1.21d | 24.78d | 0d |  | 4h | 120 | 600 |
| 38 | 1.5.1.1.2.1 | Implementar RFS13 | 0.05d | 2021-07-20 11:44 | 2021-07-20 13:04 | 32 | 2021-07-28 09:56 | 2021-07-28 11:36 | 0.21d | 24.78d | 0d | Analista 01; Analista 03; Analista 05 | 1h | 30 | 150 |
| 39 | 1.5.1.1.2.2 | Implementar RFS14 | 0.04d | 2021-07-20 13:04 | 2021-07-20 13:24 | 38 | 2021-07-28 11:36 | 2021-07-28 14:16 | 0.33d | 24.78d | 0d | Analista 01; Analista 03; Analista 05 | 1h | 30 | 150 |
| 40 | 1.5.1.1.2.3 | Implementar RFS15 | 0.04d | 2021-07-20 13:24 | 2021-07-20 13:44 | 39 | 2021-07-28 14:16 | 2021-07-29 09:56 | 0.33d | 24.78d | 0d | Analista 01; Analista 03; Analista 05 | 1h | 30 | 150 |
| 41 | 1.5.1.1.2.4 | Implementar RFS16 | 0.04d | 2021-07-20 13:44 | 2021-07-20 14:04 | 40 | 2021-07-29 09:56 | 2021-07-29 11:36 | 0.21d | 24.78d |  | Analista 01; Analista 03; Analista 05 | 1h | 30 | 150 |
| 42 | 1.5.1.2 | **Teste** | 0.23d | 2021-07-20 11:44 | 2021-07-20 14:34 |  | 2021-07-26 14:16 | 2021-07-29 14:07 | 2.98d | 24.78d | 0d |  | 2h | 20 | 90 |
| 43 | 1.5.1.2.1 | Testar RC01 | 0.06d | 2021-07-20 11:44 | 2021-07-20 13:14 | 32 | 2021-07-26 14:16 | 2021-07-26 15:46 | 0.19d | 24.95d |  | Analista 02; Analista 04 | 1h | 10 | 30 |
| 44 | 1.5.1.2.2 | Testar RC04 | 0.06d | 2021-07-20 14:04 | 2021-07-20 14:34 | 37 | 2021-07-28 09:56 | 2021-07-28 11:26 | 0.19d | 24.78d |  | Analista 02; Analista 04 | 1h | 10 | 30 |
| 45 | 1.5.2 | **Release 02** | 6.02d? | 2021-07-20 14:34 | 2021-07-28 14:44 |  | 2021-07-29 14:07 | 2021-08-03 11:37 | 2.81d | 24.78d |  |  | 104h | 2,760 | 1,140 |
| 46 | 1.5.2.1 | **Implementação** | 6.02d? | 2021-07-20 14:34 | 2021-07-28 14:44 |  | 2021-07-29 14:07 | 2021-08-03 11:37 | 2.81d | 24.78d |  |  | 104h | 2,760 | 1,140 |
| 47 | 1.5.2.1.1 | **Requisitos Funcionais de Cliente 02** | 1.75d | 2021-07-20 14:34 | 2021-07-22 11:34 |  | 2021-07-29 14:07 | 2021-08-02 11:07 | 1.75d | 24.78d | 0d |  | 24h | 720 | 720 |
| 48 | 1.5.2.1.1.1 | Implementar RFS05 | 0.45d | 2021-07-20 14:34 | 2021-07-21 10:34 | 42 | 2021-07-29 14:07 | 2021-07-30 10:07 | 0.39d | 24.41d | 0d | Analista 01; Analista 03; Analista 05 | 6h | 180 | 180 |
| 49 | 1.5.2.1.1.2 | Implementar RFS06 | 0.32d | 2021-07-21 10:34 | 2021-07-21 13:34 | 48 | 2021-07-30 10:07 | 2021-07-30 13:07 | 0.27d | 24.41d | 0d | Analista 01; Analista 03; Analista 05 | 6h | 180 | 180 |
| 50 | 1.5.2.1.1.3 | Implementar RFS07 | 0.32d | 2021-07-21 13:34 | 2021-07-22 09:34 | 49 | 2021-07-30 13:07 | 2021-08-02 09:07 | 0.27d | 24.41d | 0d | Analista 01; Analista 03; Analista 05 | 6h | 180 | 180 |
| 51 | 1.5.2.1.1.4 | Implementar RFS08 | 0.25d | 2021-07-22 09:34 | 2021-07-22 11:34 | 50 | 2021-08-02 09:07 | 2021-08-02 11:07 | 0.25d | 24.41d |  | Analista 01; Analista 03; Analista 05 | 6h | 180 | 180 |

| ID | WBS | Task | Duration | Start | Finish | Predecessors | Baseline start | Baseline finish | Baseline duration | Total slack | Free slack | Resources | Work | Cost | Baseline cost |
| --- | --- | --- | --- | --- | --- | --- | --- | --- | --- | --- | --- | --- | --- | --- | --- |
| 52 | 1.5.2.1.2 | **Requisitos Funcionais de Cliente 03** | 1.21d? | 2021-07-22 11:34 | 2021-07-23 14:14 |  | 2021-07-26 14:16 | 2021-07-28 09:56 | 1.58d? | 24.78d | 0d |  | 20h | 600 | 600 |
| 53 | 1.5.2.1.2.1 | Implementar RFS09 | 0.33d? | 2021-07-22 11:34 | 2021-07-22 14:14 | 47 | 2021-07-26 14:16 | 2021-07-27 09:56 | 0.33d? | 24.78d | 0d | Analista 01; Analista 03; Analista 05 | 5h | 150 | 150 |
| 54 | 1.5.2.1.2.2 | Implementar RFS10 | 0.32d? | 2021-07-22 14:14 | 2021-07-23 09:54 | 53 | 2021-07-27 09:56 | 2021-07-27 11:36 | 0.21d? | 24.41d | 0d | Analista 01; Analista 03; Analista 05 | 5h | 150 | 150 |
| 55 | 1.5.2.1.2.3 | Implementar RFS11 | 0.21d? | 2021-07-23 09:54 | 2021-07-23 11:34 | 54 | 2021-07-27 11:36 | 2021-07-27 14:16 | 0.33d? | 24.41d | 0d | Analista 01; Analista 03; Analista 05 | 5h | 150 | 150 |
| 56 | 1.5.2.1.2.4 | Implementar RFS12 | 0.33d? | 2021-07-23 11:34 | 2021-07-23 14:14 | 55 | 2021-07-27 14:16 | 2021-07-28 09:56 | 0.33d? | 24.78d |  | Analista 01; Analista 03; Analista 05 | 5h | 150 | 150 |
| 57 | 1.5.2.1.3 | **Requisitos Funcionais de Cliente 05** | 1.75d? | 2021-07-23 14:14 | 2021-07-27 11:14 |  | 2021-08-02 11:07 | 2021-08-03 10:07 | 0.88d | 24.78d | 0d |  | 24h | 720 | 360 |
| 58 | 1.5.2.1.3.1 | Implementar RFS17 | 0.4d | 2021-07-23 14:14 | 2021-07-26 10:14 | 52 | 2021-08-02 11:07 | 2021-08-02 14:07 | 0.38d | 24.41d | 0d | Analista 01; Analista 03; Analista 05 | 6h | 180 | 180 |
| 59 | 1.5.2.1.3.2 | Implementar RFS18 | 0.28d | 2021-07-26 10:14 | 2021-07-26 13:14 | 58 | 2021-08-02 14:07 | 2021-08-03 10:07 | 0.39d | 24.41d | 0d | Analista 01; Analista 03; Analista 05 | 6h | 180 | 180 |
| 60 | 1.5.2.1.3.3 | Implementar RFS19 | 0.28d? | 2021-07-26 13:14 | 2021-07-27 09:14 | 59 |  |  |  | 24.41d | 0d | Analista 01; Analista 03; Analista 05 | 6h | 180 |  |
| 61 | 1.5.2.1.3.4 | Implementar RFS20 | 0.25d? | 2021-07-27 09:14 | 2021-07-27 11:14 | 60 |  |  |  | 24.41d |  | Analista 01; Analista 03; Analista 05 | 6h | 180 |  |
| 62 | 1.5.2.1.4 | **Requisitos Funcionais de Cliente 06** | 0.25d? | 2021-07-27 11:14 | 2021-07-27 14:14 |  |  |  |  | 24.78d | 0d |  | 6h | 180 |  |
| 63 | 1.5.2.1.4.1 | Implementar RFS21 | 0.38d? | 2021-07-27 11:14 | 2021-07-27 14:14 | 57 |  |  |  | 24.78d |  | Analista 01; Analista 03; Analista 05 | 6h | 180 |  |
| 64 | 1.5.2.1.5 | **Requisitos Funcionais de Cliente 07** | 0.62d | 2021-07-27 14:14 | 2021-07-28 10:14 |  |  |  |  | 24.41d | 0d |  | 6h | 180 |  |
| 65 | 1.5.2.1.5.1 | Implementar RFS22 | 0.4d | 2021-07-27 14:14 | 2021-07-28 10:14 | 62 |  |  |  | 24.41d |  | Analista 01; Analista 03; Analista 05 | 6h | 180 |  |
| 66 | 1.5.2.1.6 | **Requisitos Funcionais de Cliente 08** | 0.25d | 2021-07-28 10:14 | 2021-07-28 13:14 |  |  |  |  | 24.41d | 0d |  | 6h | 180 |  |
| 67 | 1.5.2.1.6.1 | Implementar RFS23 | 0.28d | 2021-07-28 10:14 | 2021-07-28 13:14 | 64 |  |  |  | 24.41d |  | Analista 01; Analista 03; Analista 05 | 6h | 180 |  |
| 68 | 1.5.2.1.7 | **Teste** | 4.27d? | 2021-07-22 11:34 | 2021-07-28 14:44 |  | 2021-08-02 11:07 | 2021-08-03 11:37 | 1.06d | 24.78d |  |  | 18h | 180 | 60 |
| 69 | 1.5.2.1.7.1 | Testar RFC02 | 0.19d | 2021-07-22 11:34 | 2021-07-22 14:04 | 47 | 2021-08-02 11:07 | 2021-08-02 13:37 | 0.19d | 28.87d |  | Analista 02; Analista 04 | 3h | 30 | 30 |
| 70 | 1.5.2.1.7.2 | Testar RFC03 | 0.19d? | 2021-07-23 14:14 | 2021-07-23 15:44 | 52 |  |  |  | 27.66d |  | Analista 02; Analista 04 | 3h | 30 |  |
| 71 | 1.5.2.1.7.3 | Testar RFC05 | 0.19d | 2021-07-27 11:14 | 2021-07-27 13:44 | 57 | 2021-08-03 10:07 | 2021-08-03 11:37 | 0.19d | 25.91d |  | Analista 02; Analista 04 | 3h | 30 | 30 |
| 72 | 1.5.2.1.7.4 | Testar RFC06 | 0.19d? | 2021-07-27 14:14 | 2021-07-27 15:44 | 62 |  |  |  | 25.66d |  | Analista 02; Analista 04 | 3h | 30 |  |
| 73 | 1.5.2.1.7.5 | Testar RFC07 | 0.19d? | 2021-07-28 10:14 | 2021-07-28 11:44 | 64 |  |  |  | 25.03d |  | Analista 02; Analista 04 | 3h | 30 |  |
| 74 | 1.5.2.1.7.6 | Testar RFC08 | 0.19d? | 2021-07-28 13:14 | 2021-07-28 14:44 | 66 |  |  |  | 24.78d |  | Analista 02; Analista 04 | 3h | 30 |  |
| 75 | 1.6 | **Monitoramento e Controle** | 0.5d? | 2021-07-15 09:00 | 2021-07-15 14:00 |  | 2021-07-15 09:00 | 2021-07-15 14:00 | 0.5d? | 35.75d |  |  | 4h |  |  |
| 76 | 1.6.1 | Acompanhar Projeto | 0.5d | 2021-07-15 09:00 | 2021-07-15 14:00 |  | 2021-07-15 09:00 | 2021-07-15 14:00 | 0.5d | 35.75d |  | GP Externo | 4h |  |  |

| ID | WBS | Task | Type | Duration | Start | Finish | Predecessors | Baseline start | Baseline finish | Baseline duration | Total slack | Free slack | Resources | Work | Cost | Baseline cost |
| --- | --- | --- | --- | --- | --- | --- | --- | --- | --- | --- | --- | --- | --- | --- | --- | --- |
| 77 | 1.6.2 | **Gerência de Configuração** |  | 0.5d? | 2021-07-15 09:00 | 2021-07-15 14:00 |  | 2021-07-15 09:00 | 2021-07-15 14:00 | 0.5d? | 35.75d |  |  |  |  |  |
| 78 | 1.6.2.1 | Elaborar Branch | milestone | 0d? | 2021-07-15 09:00 | 2021-07-15 09:00 |  | 2021-07-15 09:00 | 2021-07-15 09:00 | 0d? | 36.25d |  |  |  |  |  |
| 79 | 1.6.2.2 | Realizar Merge da Branch X para a Master |  | 0.5d? | 2021-07-15 09:00 | 2021-07-15 14:00 |  | 2021-07-15 09:00 | 2021-07-15 14:00 | 0.5d? | 35.75d |  |  |  |  |  |
| 80 | 1.7 | **Fechamento** |  | 1.25d? | 2021-07-28 14:44 | 2021-07-29 16:44 |  | 2021-08-03 11:37 | 2021-08-04 10:37 | 0.88d? | 24.74d |  |  | 13h | 270 | 270 |
| 81 | 1.7.1 | Teste do Sistema |  | 0.72d? | 2021-07-28 14:44 | 2021-07-29 11:44 | 29 | 2021-08-03 11:37 | 2021-08-03 15:37 | 0.5d? | 24.74d | 0d | Analista 01; Analista 03; Analista 05 | 9h | 270 | 270 |
| 82 | 1.7.2 | Aprovaçao do Cliente |  | 0.5d | 2021-07-29 11:44 | 2021-07-29 16:44 | 81 | 2021-08-03 15:37 | 2021-08-04 10:37 | 0.5d | 24.74d | 0d | GP Externo | 4h |  |  |
| 83 | 1.8 | **Controle de Mudanças** |  | 0.45d? | 2021-07-29 16:44 | 2021-07-30 11:20 |  | 2021-08-04 10:37 | 2021-08-04 13:57 | 0.29d? | 24.74d |  |  | 7h | 210 | 210 |
| 84 | 1.8.1 | Realizar Mudanças Solicitas pelo Cliente |  | 0.45d? | 2021-07-29 16:44 | 2021-07-30 11:20 | 82 | 2021-08-04 10:37 | 2021-08-04 13:57 | 0.41d? | 24.74d |  | Analista 01; Analista 03; Analista 05 | 7h | 210 | 210 |
